# AndroidMapper_WBS--Fixed Work_fromWeston--resourceLeveled

How a schedule from MS Project changed from version to version. A marks actual dates.

## Version 1 (saved 2012-04-21)

Note of the change: Added project presentation to GIT so we have a back-up copy and single place for the master. I also checked in the updated WBS being used in the presentation. We will need to discuss this in the next meeting.

| ID | WBS | Task | Duration | Start | Finish | Predecessors | Complete | Total float | Constraint |
| --- | --- | --- | --- | --- | --- | --- | --- | --- | --- |
| 1 | 1 | **Android Mapper** | 17.44d | 2012-02-02 A | 2012-05-10 |  | 61% | 12.69d |  |
| 2 | 1.1 | **Project Mangement** | 17.44d | 2012-02-02 A | 2012-05-10 |  | 63% | 12.69d |  |
| 3 |  | Start Project | 0h | 2012-02-02 | 2012-02-02 |  |  | 30.12d |  |
| 4 |  | End Project | 0d | 2012-05-10 | 2012-05-10 | 42, 12, 31, 82, 11, 83, 78 |  | 12.69d |  |
| 5 | 1.1.3 | **Class Deliverables** | 15.5d | 2012-02-02 A | 2012-05-01 |  | 58% | 14.62d |  |
| 6 | 1.1.3.1 | **Statement of Work** | 4.12d | 2012-02-02 A | 2012-02-24 A |  | 100% |  |  |
| 7 |  | Prepare UMN SOW | 13h | 2012-02-16 A | 2012-02-24 A | 3, 14FF | 100% |  |  |
| 8 |  | Prepare Minneapolis Skyway SOW | 20h | 2012-02-02 A | 2012-02-15 A | 3, 14FF | 100% |  |  |
| 9 |  | Prepare Master Project Plan | 12.5h | 2012-02-24 A | 2012-03-01 A | 15FF, 7, 8 | 100% |  |  |
| 10 |  | Prepare Status Report | 12.5h | 2012-03-21 A | 2012-04-03 | 9, 16FF | 15% | 18.15d |  |
| 11 |  | Prepare Presentation | 12.5h | 2012-04-13 A | 2012-04-24 | 17FF, 10 | 6% | 15.88d |  |
| 12 |  | Prepare Final Project Report | 12.5h | 2012-04-20 | 2012-05-01 | 18FF, 9 |  | 14.62d |  |
| 13 | 1.1.3.6 | **Project Deliverable Due Dates** | 13.5d | 2012-02-14 | 2012-05-01 |  |  | 0d |  |
| 14 |  | Statement of Work Due | 0h | 2012-02-14 | 2012-02-14 |  |  |  |  |
| 15 |  | Master Project Plan Due | 0h | 2012-02-28 | 2012-02-28 |  |  |  | start no earlier than 2012-02-28 |
| 16 |  | Status Report Due | 0h | 2012-04-03 | 2012-04-03 |  |  |  |  |
| 17 |  | Presentation Due | 0h | 2012-04-24 | 2012-04-24 |  |  |  |  |
| 18 |  | Final Project Report Due | 0h | 2012-05-01 | 2012-05-01 |  |  |  |  |
| 19 | 1.1.4 | **Team Meeting** | 231.25d | 2012-02-11 A | 2012-04-28 |  | 75% | 250.12d |  |
| 20 |  | Team Meeting 1 | 2h | 2012-02-11 A | 2012-02-11 A | 3 | 100% |  | start no earlier than 2012-02-11 |
| 21 |  | Team Meeting 2 | 2h | 2012-02-18 A | 2012-02-18 A | 20 | 100% |  | start no earlier than 2012-02-18 |
| 22 |  | Team Meeting 3 | 2h | 2012-02-25 A | 2012-02-25 A | 21 | 100% |  | start no earlier than 2012-02-25 |
| 23 |  | Team Meeting 4 | 2h | 2012-03-03 A | 2012-03-03 A | 22 | 100% |  | start no earlier than 2012-03-03 |
| 24 |  | Team Meeting 5 | 2h | 2012-03-10 A | 2012-03-10 A | 23 | 100% |  | start no earlier than 2012-03-10 |
| 25 |  | Team Meeting 6 | 2h | 2012-03-17 | 2012-03-17 | 24 |  | 376.12d | start no earlier than 2012-03-17 |
| 26 |  | Team Meeting 7 | 2h | 2012-03-24 A | 2012-03-24 A | 25 | 100% |  | start no earlier than 2012-03-24 |
| 27 |  | Team Meeting 8 | 6h | 2012-03-31 A | 2012-03-31 A | 26 | 100% |  | start no earlier than 2012-03-31 |
| 28 |  | Team Meeting 9 | 2h | 2012-04-07 | 2012-04-07 | 27 |  | 313.12d | start no earlier than 2012-04-07 |
| 29 |  | Team Meeting 10 | 6h | 2012-04-14 A | 2012-04-14 A | 28 | 100% |  | start no earlier than 2012-04-14 |
| 30 |  | Team Meeting 11 | 2h | 2012-04-21 | 2012-04-21 | 29 |  | 270.88d | start no earlier than 2012-04-21 |
| 31 |  | Team Meeting 12 | 2h | 2012-04-28 | 2012-04-28 | 30 |  | 250.12d | start no earlier than 2012-04-28 |
| 32 | 1.2 | **Environment Setup** | 4.44d | 2012-02-27 | 2012-03-21 |  | 99% |  |  |
| 33 |  | Start Environmental Set-up | 0d | 2012-03-01 | 2012-03-01 | 9 |  | 2.62d |  |
| 34 |  | Create GitHub respository | 0.5h | 2012-03-02 A | 2012-03-02 A | 33 | 100% |  |  |
| 35 | 1.2.3 | **Personal Environments** | 1.56d | 2012-03-01 A | 2012-03-12 |  | 99% | 1.06d |  |
| 36 |  | Personal Environment Set-up Started | 0h | 2012-03-01 | 2012-03-01 | 33 |  | 2.62d |  |
| 37 |  | Get google maps api developer key | 0.5h | 2012-03-12 A | 2012-03-12 A | 41 | 100% |  |  |
| 38 |  | Set-up Eclipse with Android SDK, and JUnit Plug-ins | 2h | 2012-03-01 A | 2012-03-03 A | 33 | 100% |  |  |
| 39 |  | Set-up Eclipse Projects | 10h | 2012-03-03 A | 2012-03-12 A | 38 | 100% |  |  |
| 40 |  | Set-up Git | 8h | 2012-03-03 A | 2012-03-09 A | 38, 34 | 100% |  |  |
| 41 |  | Personal Environments Established | 0h | 2012-03-12 | 2012-03-12 | 40, 39 |  | 1.12d |  |
| 42 |  | End Environmental Set-up | 0h | 2012-03-12 | 2012-03-12 | 41, 37 |  | 1.06d |  |
| 43 | 1.3 | **Application** | 16.19d | 2012-02-02 A | 2012-05-03 |  | 69% | 8.94d |  |
| 44 |  | Start Application Work | 0h | 2012-03-12 | 2012-03-12 | 42 |  | 17.44d |  |
| 45 | 1.3.2 | **Framework** | 11.81d | 2012-02-02 A | 2012-04-10 |  | 81% | 13.31d |  |
| 46 |  | Show Map | 2h | 2012-03-13 A | 2012-03-14 A | 44 | 100% |  |  |
| 47 | 1.3.2.2 | **Locate Position** | 0.88d | 2012-03-13 A | 2012-03-20 |  | 94% | 17d |  |
| 48 |  | Get Position | 2h | 2012-03-13 A | 2012-03-14 A | 44 | 100% |  |  |
| 49 |  | Test (Unit level) for Get Positition (iteration 1 code) | 5h | 2012-03-15 A | 2012-03-20 A | 48 | 100% |  |  |
| 50 |  | Show Position | 1h | 2012-03-15 A | 2012-03-15 A | 48, 46 | 100% |  |  |
| 51 |  | Notify User Of Inability to Position | 0.5h | 2012-03-15 | 2012-03-15 | 48 |  | 17.56d |  |
| 52 |  | Load Appropriate Map | 2h | 2012-03-22 | 2012-03-23 | 66, 68 |  | 16.19d |  |
| 53 | 1.3.2.4 | **Locate Coordinates** | 15h | 2012-03-15 A | 2012-03-27 |  | 37% | 15.75d |  |
| 54 |  | Locate destination | 1.25h | 2012-03-15 A | 2012-03-16 | 46 | 80% | 16.22d |  |
| 55 |  | Display destination on map | 15h | 2012-03-15 A | 2012-03-27 | 46, 54 | 33% | 15.75d |  |
| 56 |  | Route to Destination | 25h | 2012-03-22 A | 2012-04-10 A | 66, 68, 50 | 100% |  |  |
| 57 |  | Update current location | 2h | 2012-03-16 A | 2012-03-19 A | 50 | 100% |  |  |
| 58 |  | Allow Zooming and Panning | 0h | 2012-03-14 | 2012-03-14 | 46 |  | 17.62d |  |
| 59 |  | Manage Favorites | 25h | 2012-03-19 A | 2012-04-09 A | 54 | 100% |  |  |
| 60 |  | Save History | 5h | 2012-02-02 A | 2012-02-06 |  | 20% | 24.5d |  |
| 61 |  | Change Layout by Screen Orientation | 0h | 2012-03-27 | 2012-03-27 | 44, 55 |  | 15.75d |  |
| 62 |  | Display Help | 5h | 2012-03-19 A | 2012-03-21 A | 44 | 100% |  |  |
| 63 |  | Resume Previous State | 0.5h | 2012-03-13 A | 2012-03-13 | 44 | 50% | 17.81d |  |
| 64 |  | Display Keyboard | 0h | 2012-03-12 | 2012-03-12 | 44 |  | 17.88d |  |
| 65 | 1.3.3 | **Mpls Map** | 0.88d | 2012-03-19 A | 2012-03-22 A |  | 100% |  |  |
| 66 |  | Overlay Minnapolis Skyway Map | 5h | 2012-03-19 A | 2012-03-22 A | 46, 55 | 100% |  |  |
| 67 | 1.3.4 | **UMN Twin Cities Map** | 8.69d | 2012-03-15 A | 2012-05-03 |  | 19% | 8.94d |  |
| 68 |  | Overlay Campus Map | 5h | 2012-03-15 A | 2012-03-20 | 46 | 80% | 14.38d |  |
| 69 |  | Indicate Tunnel vs. Skyway | 3h | 2012-03-20 | 2012-04-03 | 68 |  | 14.38d |  |
| 70 |  | Indicate Floor Change | 13h | 2012-04-10 | 2012-05-03 | 56, 57 |  | 8.94d |  |

| ID | WBS | Task | Duration | Start | Finish | Predecessors | Complete | Total float | Constraint |
| --- | --- | --- | --- | --- | --- | --- | --- | --- | --- |
| 71 | 1.3.5 | **Device Field Testing** | 6.12d | 2012-03-16 A | 2012-04-20 |  | 22% | 11.38d |  |
| 72 |  | Verify app basic functionality | 1h | 2012-03-16 A | 2012-03-16 A | 46, 48, 50, 51 | 100% |  |  |
| 73 |  | Verfiy app routing functionality | 1.5h | 2012-03-26 | 2012-03-27 | 72, 75 |  | 15.62d | finish no earlier than 2012-03-27 |
| 74 |  | Verify app complete functionality | 2h | 2012-04-19 | 2012-04-20 | 73, 76 |  | 11.38d | finish no earlier than 2012-04-20 |
| 75 |  | Device Testing: Feature Set 1 | 0h | 2012-03-16 | 2012-03-16 | 72, 44 |  | 16.94d |  |
| 76 |  | Device Testing: Feature Set 2 | 0h | 2012-03-27 | 2012-03-27 | 75, 73 |  | 15.62d |  |
| 77 |  | Device Testing: Feature Set 3 | 0h | 2012-04-20 | 2012-04-20 | 76, 74 |  | 11.38d |  |
| 78 |  | End Application Work | 0h | 2012-05-03 | 2012-05-03 | 51, 52, 58, 59, 60, 61, 62, 63, 64, 69, 70, 72, 73, 74, 77 |  | 8.94d |  |
| 79 | 1.4 | **Deployment** | 11.75d | 2012-03-01 A | 2012-05-10 |  | 20% | 12.69d |  |
| 80 | 1.4.1 | **Ready Application For Marketplace** | 11.62d | 2012-03-02 | 2012-05-10 |  |  | 12.69d |  |
| 81 |  | Create Marketplace Material | 2h | 2012-03-02 | 2012-03-04 | 33 |  | 23.69d |  |
| 82 |  | Upload to Android Marketplace | 3h | 2012-05-08 | 2012-05-10 | 86, 81 |  | 12.81d |  |
| 83 |  | User Documentation | 10h | 2012-05-03 | 2012-05-10 | 78 |  | 12.69d |  |
| 84 | 1.4.1.4 | **Package application for marketplace** | 0.75d | 2012-05-03 | 2012-05-08 |  |  | 12.81d |  |
| 85 |  | Get Google Maps API production keys | 1h | 2012-05-03 | 2012-05-04 | 78 |  | 12.81d |  |
| 86 |  | Sign application | 5h | 2012-05-04 | 2012-05-08 | 85 |  | 12.81d |  |
| 87 | 1.4.2 | **Marketing Plan** | 1.75d | 2012-03-01 A | 2012-03-14 |  | 36% | 22.69d |  |
| 88 |  | Start Marketing | 0h | 2012-03-01 | 2012-03-01 | 9 |  | 24.19d |  |
| 89 | 1.4.2.2 | **UMN Daily** | 1.5d | 2012-03-03 A | 2012-03-14 |  | 17% | 22.69d |  |
| 90 |  | Contact University of Minnesota Daily Publisher | 2h | 2012-03-03 A | 2012-03-05 A | 88 | 100% |  |  |
| 91 |  | Create and publish an article | 10h | 2012-03-05 | 2012-03-14 | 90 |  | 22.69d |  |
| 92 | 1.4.2.3 | **Flyers** | 10h | 2012-03-01 A | 2012-03-09 |  | 40% |  |  |
| 93 |  | Design Flyers | 4h | 2012-03-01 A | 2012-03-05 A | 88 | 100% |  |  |
| 94 |  | Print Flyers | 2h | 2012-03-05 | 2012-03-07 | 93 |  | 0d |  |
| 95 |  | Distribute Flyers | 4h | 2012-03-07 | 2012-03-09 | 94 |  | 0d |  |
| 96 |  | Set up and maintain facebook page | 3h | 2012-03-07 A | 2012-03-08 A | 88 | 100% |  |  |
| 97 |  | Set up advertisement in Minneapolis skyway Papers | 0h | 2012-03-02 | 2012-03-02 | 88 |  | 24.31d |  |
| 98 |  | End Marketing | 0h | 2012-03-09 | 2012-03-09 | 90, 96, 97, 95 |  | 23.19d |  |
| 99 | 2 | **Post Deployment Options** | 13.62d | 2012-05-14 A | 2012-07-20 |  | 6% |  |  |
| 100 | 2.1 | **Project Management** | 5d | 2012-05-14 | 2012-06-08 |  |  | 7.38d |  |
| 101 |  | Start Optional Features | 0h | 2012-05-14 | 2012-05-14 | 78 |  | 7.38d |  |
| 102 |  | End Optional Features | 0h | 2012-06-08 | 2012-06-08 | 104, 113, 115, 105 |  | 7.38d |  |
| 103 | 2.2 | **Framework** | 1.62d? | 2012-05-14 A | 2012-05-22 |  | 11% | 10.75d |  |
| 104 |  | Display List of Businesses | 13h | 2012-05-14 | 2012-05-22 | 101 |  | 10.75d |  |
| 105 |  | Set Up MonkeyRunner | 5h | 2012-05-14 | 2012-05-16 | 101 |  | 11.75d |  |
| 106 |  | Configure EMMA code converage | 8h? | 2012-05-14 | 2012-05-17 | 101 |  | 11.38d |  |
| 107 |  | Setup mocking framework in Eclipse | 5h | 2012-05-14 A | 2012-05-16 A | 101 | 100% |  |  |
| 108 | 2.2.5 | **Automated build** | 1.25d | 2012-05-14 | 2012-05-18 |  |  | 11.12d |  |
| 109 |  | Ant Script | 2h | 2012-05-14 | 2012-05-14 | 101 |  | 11.12d |  |
| 110 |  | Configure Travis-CI | 3h | 2012-05-15 | 2012-05-16 | 101, 40, 109 |  | 11.75d |  |
| 111 |  | Setup mocking framework on Ant | 8h | 2012-05-15 | 2012-05-18 | 109 |  | 11.12d |  |
| 112 | 2.3 | **Mpls Map** | 0.62d | 2012-05-14 | 2012-05-16 |  |  | 11.75d |  |
| 113 |  | Reroute based on Closures | 5h | 2012-05-14 | 2012-05-16 | 56, 101 |  | 11.75d |  |
| 114 | 2.4 | **UMN Twin Cities Map** | 5d | 2012-05-14 | 2012-06-08 |  |  | 7.38d |  |
| 115 |  | Route using Sidewalks | 40h | 2012-05-14 | 2012-06-08 | 56, 101 |  | 7.38d |  |

## Version 2 (saved 2012-04-28)

Note of the change: Updated WBS. Need input from Jon and Kristin.

Last finish stays 2012-07-20. Complete tasks 30 → 40.

Added:

| ID | Task | Duration | Start | Finish |
| --- | --- | --- | --- | --- |
| 84 | Create Movie | 8h? | 2012-05-03 A | 2012-05-09 A |
| 85 | Create Help Text | 3h? | 2012-05-03 A | 2012-05-07 A |

Changed:

| ID | Task | Start | Finish | Duration | Complete | Total float |
| --- | --- | --- | --- | --- | --- | --- |
| 1 | **Android Mapper** |  |  | 17.44d → 17.31d? | 61% → 77% | 12.69d → 12.81d |
| 2 | **Project Mangement** |  |  | 17.44d → 17.31d | 63% → 96% | 12.69d → 12.81d |
| 5 | **Class Deliverables** |  |  |  | 58% → 99% | 14.62d → 0d |
| 10 | Prepare Status Report |  | 2012-04-03 → 2012-03-28 A (-6d) | 12.5h → 6.25h | 15% → 100% | 18.15d → none |
| 11 | Prepare Presentation |  | 2012-04-24 → 2012-04-20 A (-4d) | 12.5h → 10h | 6% → 100% | 15.88d → none |
| 12 | Prepare Final Project Report | 2012-04-20 A | 2012-05-01 → 2012-04-26 A (-5d) | 12.5h → 7.5h | 0% → 100% | 14.62d → none |
| 19 | **Team Meeting** |  |  |  | 75% → 88% |  |
| 30 | Team Meeting 11 | 2012-04-21 A | 2012-04-21 A |  | 0% → 100% | 270.88d → none |
| 31 | Team Meeting 12 | 2012-04-28 A | 2012-04-28 A |  | 0% → 100% | 250.12d → none |
| 43 | **Application** |  |  |  | 69% → 66% | 8.94d → 0.58d |
| 45 | **Framework** |  |  |  | 81% → 73% | 13.31d → 4.95d |
| 52 | Load Appropriate Map | 2012-03-22 → 2012-03-23 (+1d) |  |  |  | 16.19d → 7.77d |
| 59 | Manage Favorites |  | 2012-04-09 A → 2012-04-04 A (-5d) | 25h → 20h |  |  |
| 60 | Save History |  | 2012-02-06 A |  | 20% → 100% | 24.5d → none |
| 63 | Resume Previous State |  | 2012-03-13 → 2012-03-26 (+13d) | 0.5h → 15h | 50% → 2% | 17.81d → 7.64d |
| 67 | **UMN Twin Cities Map** |  |  |  | 19% → 38% | 8.94d → 0.58d |
| 68 | Overlay Campus Map |  | 2012-03-20 → 2012-03-22 A (+2d) | 5h → 10h | 80% → 100% | 14.38d → none |
| 69 | Indicate Tunnel vs. Skyway | 2012-03-20 → 2012-03-23 (+3d) | 2012-04-03 → 2012-04-06 (+3d) |  |  | 14.38d → 5.39d |
| 71 | **Device Field Testing** |  | 2012-04-20 → 2012-04-25 (+5d) | 6.12d → 7.12d | 22% → 62% | 11.38d → 2.02d |
| 73 | Verfiy app routing functionality | 2012-03-26 A |  | 1.5h → 2h | 0% → 50% | 15.62d → 7.45d |
| 74 | Verify app complete functionality | 2012-04-19 A | 2012-04-20 → 2012-04-25 (+5d) | 2h → 10h | 0% → 60% | 11.38d → 2.02d |
| 77 | Device Testing: Feature Set 3 | 2012-04-20 → 2012-04-25 (+5d) | 2012-04-20 → 2012-04-25 (+5d) |  |  | 11.38d → 2.02d |
| 79 | **Deployment** |  |  | 11.75d → 11.62d? | 20% → 60% | 12.69d → 12.81d |
| 80 | **Ready Application For Marketplace** | 2012-03-02 A |  | 11.62d → 11.5d? | 0% → 61% | 12.69d → 12.81d |
| 81 | Create Marketplace Material | 2012-03-02 A | 2012-03-04 → 2012-03-05 A (+1d) | 2h → 3h | 0% → 100% | 23.69d → none |
| 83 | **User Documentation** | 2012-05-03 A | 2012-05-10 → 2012-05-09 A (-1d) | 10h → 1d? | 0% → 100% | 12.69d → none |
| 89 | **Marketing Plan** |  | 2012-03-14 → 2012-03-15 (+1d) | 1.75d → 1.94d | 36% → 59% | 22.69d → 22.5d |
| 91 | **UMN Daily** |  |  |  | 17% → 42% |  |
| 93 | Create and publish an article | 2012-03-05 A |  |  | 0% → 30% |  |
| 98 | Set up and maintain facebook page |  | 2012-03-08 A → 2012-03-15 A (+7d) | 3h → 10h |  |  |
| 100 | End Marketing | 2012-03-09 → 2012-03-15 (+6d) | 2012-03-09 → 2012-03-15 (+6d) |  |  | 23.19d → 22.5d |

## Version 3 (saved 2012-04-30)

Note of the change: Adding my actuals

Last finish stays 2012-07-20. Complete tasks 40 → 41.

Changed:

| ID | Task | Start | Finish | Duration | Complete | Total float |
| --- | --- | --- | --- | --- | --- | --- |
| 43 | **Application** |  |  |  | 66% → 68% | 0.58d → 8.94d |
| 45 | **Framework** |  |  |  | 73% → 71% | 4.95d → 13.31d |
| 53 | **Locate Coordinates** |  |  |  | 37% → 25% | 7.39d → 15.75d |
| 55 | Display destination on map |  |  |  | 33% → 20% | 7.39d → 15.75d |
| 67 | **UMN Twin Cities Map** |  |  |  | 38% → 54% | 0.58d → 8.94d |
| 69 | Indicate Tunnel vs. Skyway | 2012-03-23 A | 2012-04-06 → 2012-04-09 A (+3d) | 3h → 5h | 0% → 100% | 5.39d → none |
| 101 | **Post Deployment Options** |  |  |  | 6% → 12% |  |
| 105 | **Framework** |  |  |  | 11% → 25% |  |
| 106 | Display List of Businesses | 2012-05-14 A |  |  | 0% → 46% |  |

## Version 4 (saved 2012-04-30)

Note of the change: Updated WBS to be included in final project report.

Last finish stays 2012-07-20.

Changed:

| ID | Task | Finish | Duration | Complete | Total float | Other |
| --- | --- | --- | --- | --- | --- | --- |
| 1 | **Android Mapper** |  | 17.31d? → 17.31d |  |  |  |
| 43 | **Application** |  |  | 68% → 67% |  |  |
| 45 | **Framework** |  |  | 71% → 70% |  |  |
| 53 | **Locate Coordinates** |  |  | 25% → 24% |  |  |
| 54 | Locate destination |  | 1.25h → 2h | 80% → 50% | 15.97d → 15.88d | resources none → Developer |
| 55 | Display destination on map |  |  |  |  | resources none → Developer |
| 79 | **Deployment** |  | 11.62d? → 11.62d | 60% → 57% |  |  |
| 80 | **Ready Application For Marketplace** |  | 11.5d? → 11.5d | 61% → 53% |  |  |
| 83 | **User Documentation** | 2012-05-09 A → 2012-05-07 A (-2d) | 1d? → 0.5d |  |  |  |
| 84 | Create Movie | 2012-05-09 A → 2012-05-07 A (-2d) | 8h? → 4h |  |  | resources none → Analyst; Developer [50%] |
| 85 | Create Help Text |  | 3h? → 3h |  |  | resources none → Analyst |
